Schedule from MS Project, 2023-08-22 to 2023-12-18, costs in $.

## Calendars

- Estándar: Mon-Fri 09:00-13:00, 14:00-18:00; Sat-Sun off. Exceptions (off unless hours are given): 2023-09-18 to 2023-09-19 (Fiestas Patrias), 2023-10-09 (Feriado encuentro de dos mundos), 2023-10-27 (Feriado Día de las iglesias Evangélicas y Protestantes), 2023-11-01 09:00-13:00, 15:00-19:00, 2023-12-08 (Feriado Inmaculada Concepción).

## Resources

| Resource | Rate | Cost per use |
| --- | --- | --- |
| Programador Junior | 4000 |  |
| Programador Senior | 8000 |  |
| Desarrollador Frontend | 8000 |  |
| Gerente de Proyecto | 12300 |  |
| Oficina |  | 500000 |
| Computador 1 |  | 853000 |
| Computador 2 |  | 853000 |
| Computador 3 |  | 853000 |
| Computador 4 |  | 853000 |
| Licencia SO 1 |  | 20000 |
| Licencia SO 2 |  | 20000 |
| Licencia SO 3 |  | 20000 |
| Licencia SO 4 |  | 20000 |
| Python |  |  |
| Django |  |  |
| AWS Cloud |  |  |
| Amazon Web Service |  |  |
| StarUML |  |  |
| Canva |  |  |
| Administrador de Sistemas | 6750 |  |
| Computador 5 |  | 835000 |
| Licencia SO 5 |  |  |

## Schedule

| ID | WBS | Task | Type | Duration | Start | Finish | Predecessors | Total slack | Free slack | Constraint | Resources | Work | Cost |
| --- | --- | --- | --- | --- | --- | --- | --- | --- | --- | --- | --- | --- | --- |
| 1 | 1 | **Fase de Inicio** |  | 12d | 2023-08-22 | 2023-09-06 |  | 0d |  |  |  | 96h | 6,672,800 |
| 2 | 1.1 | Definicion de Alcance |  | 3d | 2023-08-22 | 2023-08-24 |  | 0d |  |  | Computador 1; Gerente de Proyecto; Licencia SO 1; Oficina | 24h | 1,668,200 |
| 3 | 1.2 | Analisis de Viabilidad |  | 3d | 2023-08-25 | 2023-08-29 | 2 | 0d |  |  | Computador 1; Gerente de Proyecto; Licencia SO 1; Oficina | 24h | 1,668,200 |
| 4 | 1.3 | Recoleccion de Requerimientos |  | 3d | 2023-08-30 | 2023-09-01 | 2, 3 | 0d |  |  | Computador 1; Gerente de Proyecto; Licencia SO 1; Oficina | 24h | 1,668,200 |
| 5 | 1.4 | Definicion de Objetivos y Planificacion inicial |  | 3d | 2023-09-04 | 2023-09-06 | 2, 3, 4 | 0d |  |  | Computador 1; Gerente de Proyecto; Licencia SO 1; Oficina | 24h | 1,668,200 |
| 6 | 2 | **Fase de Diseño** |  | 18d | 2023-09-07 | 2023-10-04 | 1 | 0d |  |  |  | 144h | 6,523,200 |
| 7 | 2.1 | Diseño de Arquitectura |  | 5d | 2023-09-07 | 2023-09-13 |  | 0d |  |  | Computador 2; Desarrollador Frontend; StarUML; Licencia SO 2; Oficina | 40h | 1,693,000 |
| 8 | 2.2 | Diseño de UI |  | 3d | 2023-09-14 | 2023-09-20 | 7 | 0d |  |  | Desarrollador Frontend; Canva; Computador 2; Licencia SO 2; Oficina | 24h | 1,565,000 |
| 9 | 2.3 | Diseño de Logica de Software y BD |  | 7d | 2023-09-21 | 2023-09-29 | 7, 8 | 0d |  |  | Computador 3; Licencia SO 3; Programador Junior; StarUML; Oficina | 56h | 1,597,000 |
| 10 | 2.4 | Planificacion de Pruebas |  | 3d | 2023-10-02 | 2023-10-04 | 7, 8, 9 | 0d |  |  | Computador 1; Gerente de Proyecto; Licencia SO 1; Oficina | 24h | 1,668,200 |
| 11 | 3 | **Fase de Desarrollo** |  | 21d? | 2023-10-05 | 2023-11-06 | 6 | 0d |  |  |  | 144h | 6,144,000 |
| 12 | 3.1 | Fase de Desarrollo | milestone | 0d? | 2023-10-05 | 2023-10-05 |  | 0d |  | must start on 2023-10-05 |  |  |  |
| 13 | 3.2 | Fase de Desarrollo | milestone | 0d? | 2023-11-06 | 2023-11-06 |  | 0d |  | must finish on 2023-11-06 |  |  |  |
| 14 | 3.3 | Desarrollo de Codigo |  | 7d | 2023-10-05 | 2023-10-16 |  | 3d | 0d |  | Licencia SO 4; Programador Senior; Oficina; AWS Cloud; Computador 4; Django; Python | 56h | 1,821,000 |
| 15 | 3.4 | Desarrollo de BD |  | 5d | 2023-10-17 | 2023-10-23 | 14 | 3d |  |  | Licencia SO 4; Oficina; Programador Senior; AWS Cloud; Django; Computador 4; Python | 40h | 1,693,000 |
| 16 | 3.5 | Pruebas Unitarias |  | 5d | 2023-10-30 | 2023-11-03 | 14, 15 | 0d |  | start no earlier than 2023-10-30 | Computador 4 [625%]; Django [625%]; Licencia SO 4 [625%]; Oficina [625%]; AWS Cloud [625%]; Programador Senior; Python [625%] | 40h | 1,693,000 |
| 17 | 3.6 | Integracion |  | 1d | 2023-11-06 | 2023-11-06 | 14, 15, 16 | 0d |  | finish no earlier than 2023-11-01 | AWS Cloud; Computador 4; Django; Licencia SO 4; Programador Senior | 8h | 937,000 |
| 18 | 4 | **Fase de Pruebas** |  | 12d | 2023-11-07 | 2023-11-22 | 11 | 0d |  |  |  | 96h | 5,488,000 |
| 19 | 4.1 | Pruebas Funcionales |  | 3d | 2023-11-07 | 2023-11-09 |  | 0d |  |  | Administrador de Sistemas; Computador 5; Oficina | 24h | 1,497,000 |
| 20 | 4.2 | Pruebas de Rendimiento |  | 3d | 2023-11-10 | 2023-11-14 | 19 | 0d |  |  | Administrador de Sistemas; Computador 5; Licencia SO 5; Oficina | 24h | 1,497,000 |
| 21 | 4.3 | Pruebas de Seguridad |  | 3d | 2023-11-15 | 2023-11-17 | 19, 20 | 0d |  |  | Administrador de Sistemas; Computador 5; Licencia SO 5; Oficina | 24h | 1,497,000 |
| 22 | 4.4 | Pruebas de Usuario |  | 3d | 2023-11-20 | 2023-11-22 | 19, 20, 21 | 0d |  |  | Administrador de Sistemas; Computador 5; Licencia SO 5 | 24h | 997,000 |
| 23 | 5 | **Fase de Implementacion** |  | 12d | 2023-11-23 | 2023-12-11 | 18 | 0d |  |  |  | 96h | 4,972,000 |
| 24 | 5.1 | Despliegue |  | 3d | 2023-11-23 | 2023-11-27 |  | 0d |  |  | Computador 3; Licencia SO 3; Programador Junior | 24h | 969,000 |
| 25 | 5.2 | Capacitacion de Usuarios |  | 3d | 2023-11-28 | 2023-11-30 | 24 | 0d |  |  | Computador 3; Licencia SO 3; Programador Junior | 24h | 969,000 |
| 26 | 5.3 | Documentacion |  | 3d | 2023-12-01 | 2023-12-05 | 24, 25 | 0d |  |  | Computador 3; Licencia SO 3; Oficina; Programador Junior | 24h | 1,469,000 |
| 27 | 5.4 | Mantenimiento Inicial |  | 3d | 2023-12-06 | 2023-12-11 | 24, 25, 26 | 0d |  |  | Computador 3; Licencia SO 3; Oficina; Programador Senior | 24h | 1,565,000 |

| ID | WBS | Task | Duration | Start | Finish | Predecessors | Total slack | Resources | Work | Cost |
| --- | --- | --- | --- | --- | --- | --- | --- | --- | --- | --- |
| 28 | 6 | **Fase de Operación y Mantencion** | 5d | 2023-12-12 | 2023-12-18 | 23 | 0d |  | 40h | 3,779,000 |
| 29 | 6.1 | Soporte Tecnico | 2d | 2023-12-12 | 2023-12-13 |  | 0d | AWS Cloud; Computador 3; Django; Licencia SO 3; Oficina; Python; Programador Junior | 16h | 1,437,000 |
| 30 | 6.2 | Actualizacion y Mejoras | 2d | 2023-12-14 | 2023-12-15 | 29 | 0d | AWS Cloud; Computador 3; Licencia SO 3; Oficina; Programador Junior; Python; Django | 16h | 1,437,000 |
| 31 | 6.3 | Gestion de Configuracion | 1d | 2023-12-18 | 2023-12-18 | 29, 30 | 0d | AWS Cloud; Computador 3; Django; Licencia SO 3; Programador Junior; Python | 8h | 905,000 |
